# 福莱特自研MES项目

Schedule from a web Gantt chart, 2026-08-31 to 2027-05-10.
Saturdays and Sundays are off

## Schedule

| ID | WBS | Task | Duration | Start | Finish | Predecessors | Status |
| --- | --- | --- | --- | --- | --- | --- | --- |
| 2 | 1 | 现场设备硬件确认 | 5d | 2026-11-23 | 2026-11-27 |  | waiting |
| 3 | 2 | 项目启动会 | 1d | 2026-11-20 | 2026-11-20 |  | done |
| 4 | 3 | **培训** | 10d | 2026-11-16 | 2026-11-27 |  | waiting |
| 5 | 3.1 | 培训材料编写 | 5d | 2026-11-16 | 2026-11-20 |  | waiting |
| 6 | 3.2 | 系统动员会 | 1d | 2026-11-20 | 2026-11-20 |  | waiting |
| 7 | 3.3 | 系统培训 | 5d | 2026-11-23 | 2026-11-27 |  | waiting |
| 8 | 4 | **系统试运行** | 20d | 2026-11-16 | 2026-12-11 |  | waiting |
| 9 | 4.1 | 试运行环境搭建 | 5d | 2026-11-16 | 2026-11-20 |  | waiting |
| 10 | 4.2 | 试运行数据准备 | 10d | 2026-11-16 | 2026-11-27 |  | waiting |
| 11 | 4.3 | 系统试运行 | 10d | 2026-11-30 | 2026-12-11 |  | waiting |
| 12 | 4.4 | 功能优化 | 10d | 2026-11-30 | 2026-12-11 |  | waiting |
| 13 | 5 | **系统上线** | 40d | 2026-08-31 | 2026-10-23 |  | waiting |
| 14 | 5.1 | 正式环境部署 | 5d | 2026-08-31 | 2026-09-04 |  | waiting |
| 15 | 5.2 | 正式环境数据准备 | 5d | 2026-09-07 | 2026-09-11 | 14 | waiting |
| 16 | 5.3 | 正式上线 | 15d | 2026-09-14 | 2026-10-02 |  | waiting |
| 17 | 5.4 | 验收签字 | 15d | 2026-10-05 | 2026-10-23 | 16 | waiting |
| 18 | 6 | **南通** | 85d | 2026-09-21 | 2027-01-15 |  | waiting |
| 19 | 6.1 | 南通设备准备 | 35d | 2026-09-21 | 2026-11-06 |  | waiting |
| 20 | 6.2 | **系统试运行** | 30d | 2026-11-09 | 2026-12-18 |  | waiting |
| 21 | 6.2.1 | 现场设备硬件确认 | 5d | 2026-11-09 | 2026-11-13 |  | waiting |
| 22 | 6.2.2 | 试运行环境搭建 | 5d | 2026-11-09 | 2026-11-13 |  | waiting |
| 23 | 6.2.3 | 试运行数据准备 | 10d | 2026-11-09 | 2026-11-20 |  | waiting |
| 24 | 6.2.4 | 系统动员会 | 1d | 2026-11-20 | 2026-11-20 |  | waiting |
| 25 | 6.2.5 | 系统培训 | 5d | 2026-11-23 | 2026-11-27 | 23 | waiting |
| 26 | 6.2.6 | 系统试运行 | 15d | 2026-11-30 | 2026-12-18 | 25 | waiting |
| 27 | 6.2.7 | 系统针对性优化 | 15d | 2026-11-30 | 2026-12-18 |  | waiting |

| ID | WBS | Task | Duration | Start | Finish | Predecessors | Status |
| --- | --- | --- | --- | --- | --- | --- | --- |
| 28 | 6.3 | **正式上线** | 30d | 2026-12-07 | 2027-01-15 |  | waiting |
| 29 | 6.3.1 | 正式环境部署 | 5d | 2026-12-07 | 2026-12-11 |  | waiting |
| 30 | 6.3.2 | 正式环境数据准备 | 5d | 2026-12-14 | 2026-12-18 | 29 | waiting |
| 31 | 6.3.3 | 系统正式上线 | 20d | 2026-12-21 | 2027-01-15 | 26, 30 | waiting |
| 32 | 7 | **安福三期** | 75d | 2026-11-23 | 2027-03-05 |  | waiting |
| 33 | 7.1 | 三期设备准备 | 30d | 2026-11-23 | 2027-01-01 |  | waiting |
| 34 | 7.2 | **系统试运行** | 30d | 2027-01-04 | 2027-02-12 |  | waiting |
| 35 | 7.2.1 | 现场设备硬件确认 | 5d | 2027-01-04 | 2027-01-08 |  | waiting |
| 36 | 7.2.2 | 试运行环境搭建 | 5d | 2027-01-04 | 2027-01-08 |  | waiting |
| 37 | 7.2.3 | 试运行数据准备 | 5d | 2027-01-11 | 2027-01-15 | 36 | waiting |
| 38 | 7.2.4 | 系统动员会 | 1d | 2027-01-08 | 2027-01-08 |  | waiting |
| 39 | 7.2.5 | 系统培训 | 5d | 2027-01-11 | 2027-01-15 |  | waiting |
| 40 | 7.2.6 | 系统试运行 | 20d | 2027-01-18 | 2027-02-12 | 37, 39 | waiting |
| 41 | 7.2.7 | 系统针对性优化 | 20d | 2027-01-18 | 2027-02-12 |  | waiting |
| 42 | 7.3 | **系统正式上线** | 30d | 2027-01-25 | 2027-03-05 |  | waiting |
| 43 | 7.3.1 | 正式环境部署 | 5d | 2027-01-25 | 2027-01-29 |  | waiting |
| 44 | 7.3.2 | 正式环境数据准备 | 5d | 2027-02-01 | 2027-02-05 | 43 | waiting |
| 45 | 7.3.3 | 系统正式上线 | 15d | 2027-02-15 | 2027-03-05 | 40 | waiting |
| 46 | 8 | **越南** | 90d | 2026-12-28 | 2027-04-30 |  | waiting |
| 47 | 8.1 | 越南设备准备 | 30d | 2027-01-11 | 2027-02-19 |  | waiting |
| 48 | 8.2 | 越南版本准备 | 40d | 2026-12-28 | 2027-02-19 |  | waiting |
| 49 | 8.3 | **试运行** | 35d | 2027-02-22 | 2027-04-09 |  | waiting |
| 50 | 8.3.1 | 现场设备硬件确认 | 5d | 2027-02-22 | 2027-02-26 |  | waiting |
| 51 | 8.3.2 | 试运行环境搭建 | 5d | 2027-02-22 | 2027-02-26 |  | waiting |
| 52 | 8.3.3 | 试运行数据准备 | 5d | 2027-03-01 | 2027-03-05 | 51 | waiting |
| 53 | 8.3.4 | 系统动员会 | 1d | 2027-03-05 | 2027-03-05 |  | waiting |
| 54 | 8.3.5 | 系统培训 | 5d | 2027-03-08 | 2027-03-12 | 52, 53 | waiting |
| 55 | 8.3.6 | 系统试运行 | 20d | 2027-03-15 | 2027-04-09 | 54 | waiting |
| 56 | 8.3.7 | 系统针对性优化 | 20d | 2027-03-15 | 2027-04-09 |  | waiting |

| ID | WBS | Task | Duration | Start | Finish | Status |
| --- | --- | --- | --- | --- | --- | --- |
| 57 | 8.4 | **系统上线** | 25d | 2027-03-29 | 2027-04-30 | waiting |
| 58 | 8.4.1 | 正式环境部署 | 5d | 2027-03-29 | 2027-04-02 | waiting |
| 59 | 8.4.2 | 正式环境数据准备 | 10d | 2027-03-29 | 2027-04-09 | waiting |
| 60 | 8.4.3 | 系统上线 | 15d | 2027-04-12 | 2027-04-30 | waiting |
| 61 | 9 | 安福二期 | 1d | 2027-05-10 | 2027-05-10 | waiting |
